How a schedule from MS Project changed from version to version. A marks actual dates.

## Version 1 (saved 2020-12-09)

Note of the change: wjy

| ID | WBS | Task | Duration | Start | Finish | Predecessors | Total float | Constraint |
| --- | --- | --- | --- | --- | --- | --- | --- | --- |
| 1 | 1 | **项目启动** | 5d | 2020-11-06 | 2020-11-12 |  |  |  |
| 2 |  | 组建核心团队 | 1d | 2020-11-06 | 2020-11-06 |  |  |  |
| 3 |  | 干系人分析 | 1d | 2020-11-09 | 2020-11-09 | 2 | 0d |  |
| 4 |  | 里程碑计划 | 1d | 2020-11-10 | 2020-11-10 | 3 | 0d |  |
| 5 |  | 制定项目章程 | 1d | 2020-11-11 | 2020-11-11 | 4 | 0d |  |
| 6 |  | 项目启动大会 | 1d | 2020-11-12 | 2020-11-12 | 5 | 0d |  |
| 7 | 2 | **需求分析** | 2d | 2020-11-13 | 2020-11-16 | 1 |  |  |
| 8 |  | 制定需求说明 | 2d | 2020-11-13 | 2020-11-16 | 1 | 4d | start no earlier than 2020-11-13 |
| 9 | 3 | **项目设计** | 7d | 2020-11-17 | 2020-11-25 | 7 |  |  |
| 10 |  | 详细设计说明 | 3d | 2020-11-17 | 2020-11-19 | 8 | 4d |  |
| 11 |  | 界面设计 | 4d | 2020-11-20 | 2020-11-25 | 10 | 91d | finish no earlier than 2020-11-25 |
| 12 | 4 | **实现基础界面** | 22d | 2020-11-26 | 2020-12-25 | 9 |  |  |
| 13 |  | 页面框架的实现 | 4d | 2020-11-26 | 2020-12-01 | 9 | 0d | start no earlier than 2020-11-26 |
| 14 |  | 添加测试用例功能 | 7d | 2020-12-02 | 2020-12-10 | 13 | 0d |  |
| 15 |  | 生成用例列表功能 | 5d | 2020-12-11 | 2020-12-17 | 14 | 0d |  |
| 16 |  | 删除测试用例功能 | 2d | 2020-12-18 | 2020-12-21 | 15 | 0d |  |
| 17 |  | 修改测试用例功能 | 2d | 2020-12-22 | 2020-12-23 | 16 | 0d |  |
| 18 |  | 基础功能测试 | 2d | 2020-12-24 | 2020-12-25 | 17 | 0d |  |
| 19 | 5 | **数据驱动** | 24d | 2020-12-27 | 2021-01-27 | 12 |  |  |
| 20 |  | 数据库的搭建与结合 | 4d | 2020-12-27 | 2020-12-30 | 12 | 0d |  |
| 21 |  | 测试团队维护 | 3d | 2020-12-31 | 2021-01-04 | 20 | 0d |  |
| 22 |  | 服务信息维护 | 3d | 2021-01-05 | 2021-01-07 | 21 | 0d |  |
| 23 |  | 数据库信息维护 | 4d | 2021-01-08 | 2021-01-13 | 22 | 0d |  |
| 24 |  | 参数替换维护 | 4d | 2021-01-14 | 2021-01-19 | 23 | 0d |  |
| 25 |  | 前置、后置动作维护 | 4d | 2021-01-20 | 2021-01-25 | 24 | 0d |  |
| 26 |  | 数据维护功能测试 | 2d | 2021-01-26 | 2021-01-27 | 25 | 0d |  |
| 27 | 6 | **集成环境的搭建和结果展示** | 22d | 2021-01-28 | 2021-02-26 | 19 |  |  |
| 28 |  | Jenkins+testNG+MySQL继承环境的搭建 | 7d | 2021-01-28 | 2021-02-05 | 19 | 0d |  |
| 29 |  | Jenkins任务地址添加 | 3d | 2021-02-08 | 2021-02-10 | 28 | 0d |  |
| 30 | 6.3 | **测试结果展示** | 10d | 2021-02-11 | 2021-02-24 | 29 | 0d |  |
| 31 |  | 查看成功率 | 3d | 2021-02-11 | 2021-02-15 | 29 | 0d |  |
| 32 |  | 查看覆盖率 | 3d | 2021-02-16 | 2021-02-18 | 31 | 0d |  |
| 33 |  | 用例数据统计 | 4d | 2021-02-19 | 2021-02-24 | 32 | 0d |  |
| 34 |  | 集成环境功能测试 | 2d | 2021-02-25 | 2021-02-26 | 30 | 0d |  |
| 35 | 7 | **页面完善和性能测试** | 20d | 2021-03-01 | 2021-03-26 | 27 |  |  |
| 36 |  | 测试规划 | 2d | 2021-03-01 | 2021-03-02 | 27 | 0d |  |
| 37 |  | 编写测试用例 | 5d | 2021-03-03 | 2021-03-09 | 36 | 0d |  |
| 38 |  | 实现测试用例 | 3d | 2021-03-10 | 2021-03-12 | 37 | 0d |  |
| 39 |  | 页面缺陷反馈和修正 | 7d | 2021-03-15 | 2021-03-23 | 38 | 0d |  |
| 40 |  | 产品试运行 | 3d | 2021-03-24 | 2021-03-26 | 39 | 0d |  |
| 41 | 8 | **产品报告总结和发布** | 3d | 2021-03-29 | 2021-03-31 | 35 |  |  |
| 42 |  | 产品报告 | 2d | 2021-03-29 | 2021-03-30 | 35 | 0d |  |
| 43 |  | 产品发布 | 1d | 2021-03-31 | 2021-03-31 | 42 | 0d |  |

## Version 2 (saved 2020-12-16)

Last finish 2021-03-31 → 2021-01-15 (-75d).

Changed:

| ID | Task | Start | Finish | Duration | Total float | Other |
| --- | --- | --- | --- | --- | --- | --- |
| 7 | **需求分析** |  | 2020-11-16 → 2020-11-13 (-3d) | 2d → 1d |  |  |
| 8 | 制定需求说明 |  | 2020-11-16 → 2020-11-13 (-3d) | 2d → 1d | 4d → 3d |  |
| 9 | **项目设计** | 2020-11-17 → 2020-11-16 (-1d) | 2020-11-25 → 2020-11-20 (-5d) | 7d → 5d |  |  |
| 10 | 详细设计说明 | 2020-11-17 → 2020-11-16 (-1d) | 2020-11-19 → 2020-11-17 (-2d) | 3d → 2d | 4d → 3d |  |
| 11 | 界面设计 | 2020-11-20 → 2020-11-18 (-2d) | 2020-11-25 → 2020-11-20 (-5d) | 4d → 3d | 91d → 41d | constraint finish no earlier than 2020-11-25 → start no earlier than 2020-11-18 |
| 12 | **实现基础界面** | 2020-11-26 → 2020-11-23 (-3d) | 2020-12-25 → 2020-12-03 (-22d) | 22d → 9d |  |  |
| 13 | 页面框架的实现 | 2020-11-26 → 2020-11-23 (-3d) | 2020-12-01 → 2020-11-25 (-6d) | 4d → 3d |  | constraint start no earlier than 2020-11-26 → start no earlier than 2020-11-23 |
| 14 | 添加测试用例功能 | 2020-12-02 → 2020-11-26 (-6d) | 2020-12-10 → 2020-11-27 (-13d) | 7d → 2d |  |  |
| 15 | 生成用例列表功能 | 2020-12-11 → 2020-11-30 (-11d) | 2020-12-17 → 2020-11-30 (-17d) | 5d → 1d |  |  |
| 16 | 删除测试用例功能 | 2020-12-18 → 2020-12-01 (-17d) | 2020-12-21 → 2020-12-01 (-20d) | 2d → 1d |  |  |
| 17 | 修改测试用例功能 | 2020-12-22 → 2020-12-02 (-20d) | 2020-12-23 → 2020-12-02 (-21d) | 2d → 1d |  |  |
| 18 | 基础功能测试 | 2020-12-24 → 2020-12-03 (-21d) | 2020-12-25 → 2020-12-03 (-22d) | 2d → 1d |  |  |
| 19 | **数据驱动** | 2020-12-27 → 2020-12-04 (-23d) | 2021-01-27 → 2020-12-16 (-42d) | 24d → 9d |  |  |
| 20 | 数据库的搭建与结合 | 2020-12-27 → 2020-12-04 (-23d) | 2020-12-30 → 2020-12-08 (-22d) | 4d → 3d |  |  |
| 21 | 测试团队维护 | 2020-12-31 → 2020-12-09 (-22d) | 2021-01-04 → 2020-12-09 (-26d) | 3d → 1d |  |  |
| 22 | 服务信息维护 | 2021-01-05 → 2020-12-10 (-26d) | 2021-01-07 → 2020-12-10 (-28d) | 3d → 1d |  |  |
| 23 | 数据库信息维护 | 2021-01-08 → 2020-12-11 (-28d) | 2021-01-13 → 2020-12-11 (-33d) | 4d → 1d |  |  |
| 24 | 参数替换维护 | 2021-01-14 → 2020-12-14 (-31d) | 2021-01-19 → 2020-12-14 (-36d) | 4d → 1d |  |  |
| 25 | 前置、后置动作维护 | 2021-01-20 → 2020-12-15 (-36d) | 2021-01-25 → 2020-12-15 (-41d) | 4d → 1d |  |  |
| 26 | 数据维护功能测试 | 2021-01-26 → 2020-12-16 (-41d) | 2021-01-27 → 2020-12-16 (-42d) | 2d → 1d |  |  |
| 27 | **集成环境的搭建和结果展示** | 2021-01-28 → 2020-12-17 (-42d) | 2021-02-26 → 2020-12-29 (-59d) | 22d → 10d |  |  |
| 28 | Jenkins+testNG+MySQL继承环境的搭建 | 2021-01-28 → 2020-12-17 (-42d) | 2021-02-05 → 2020-12-21 (-46d) | 7d → 3d |  |  |
| 29 | Jenkins任务地址添加 | 2021-02-08 → 2020-12-22 (-48d) | 2021-02-10 → 2020-12-23 (-49d) | 3d → 2d |  |  |
| 30 | **测试结果展示** | 2021-02-11 → 2020-12-24 (-49d) | 2021-02-24 → 2020-12-27 (-59d) | 10d → 3d |  |  |
| 31 | 查看成功率 | 2021-02-11 → 2020-12-24 (-49d) | 2021-02-15 → 2020-12-24 (-53d) | 3d → 1d |  |  |
| 32 | 查看覆盖率 | 2021-02-16 → 2020-12-25 (-53d) | 2021-02-18 → 2020-12-25 (-55d) | 3d → 1d |  |  |
| 33 | 用例数据统计 | 2021-02-19 → 2020-12-27 (-54d) | 2021-02-24 → 2020-12-27 (-59d) | 4d → 1d |  |  |
| 34 | 集成环境功能测试 | 2021-02-25 → 2020-12-28 (-59d) | 2021-02-26 → 2020-12-29 (-59d) |  |  |  |
| 35 | **页面完善和性能测试** | 2021-03-01 → 2020-12-30 (-61d) | 2021-03-26 → 2021-01-12 (-73d) | 20d → 10d |  |  |
| 36 | 测试规划 | 2021-03-01 → 2020-12-30 (-61d) | 2021-03-02 → 2020-12-30 (-62d) | 2d → 1d |  |  |
| 37 | 编写测试用例 | 2021-03-03 → 2020-12-31 (-62d) | 2021-03-09 → 2021-01-01 (-67d) | 5d → 2d |  |  |
| 38 | 实现测试用例 | 2021-03-10 → 2021-01-04 (-65d) | 2021-03-12 → 2021-01-04 (-67d) | 3d → 1d |  |  |
| 39 | 页面缺陷反馈和修正 | 2021-03-15 → 2021-01-05 (-69d) | 2021-03-23 → 2021-01-07 (-75d) | 7d → 3d |  |  |
| 40 | 产品试运行 | 2021-03-24 → 2021-01-08 (-75d) | 2021-03-26 → 2021-01-12 (-73d) |  |  |  |
| 41 | **产品报告总结和发布** | 2021-03-29 → 2021-01-13 (-75d) | 2021-03-31 → 2021-01-15 (-75d) |  |  |  |
| 42 | 产品报告 | 2021-03-29 → 2021-01-13 (-75d) | 2021-03-30 → 2021-01-14 (-75d) |  |  |  |
| 43 | 产品发布 | 2021-03-31 → 2021-01-15 (-75d) | 2021-03-31 → 2021-01-15 (-75d) |  |  |  |
